# Rocket_Av Schedule

How a schedule from MS Project changed from version to version. A marks actual dates.

## Version 1 (saved 2016-11-05)

Note of the change: Project Schedule: Task allocation still needs work

| ID | WBS | Task | Duration | Start | Finish | Predecessors | Total float | Constraint |
| --- | --- | --- | --- | --- | --- | --- | --- | --- |
| 1 |  | Start | 0d | 2016-11-05 | 2016-11-05 |  | 26d |  |
| 2 | 2 | **Finalize Schematic** | 2d | 2016-11-05 | 2016-11-06 |  | 24d |  |
| 3 |  | Check All Connections | 1d | 2016-11-05 | 2016-11-05 |  | 24d |  |
| 4 |  | Reorganize Schematic | 1d | 2016-11-05 | 2016-11-05 |  | 24d |  |
| 5 |  | Check for Requirement Compliance | 1d | 2016-11-06 | 2016-11-06 | 4, 3 | 24d |  |
| 6 | 3 | **Design Layout** | 6d | 2016-11-05 | 2016-11-10 |  | 0d |  |
| 7 |  | Insert Footprints | 1d | 2016-11-05 | 2016-11-05 |  | 0d |  |
| 8 |  | Verify Footprints | 1d | 2016-11-06 | 2016-11-06 | 7 | 0d |  |
| 9 |  | Generate BOM | 1d | 2016-11-07 | 2016-11-07 | 8 | 2d |  |
| 10 |  | Layout Board | 2d | 2016-11-07 | 2016-11-08 | 8 | 0d |  |
| 11 |  | Review Layout | 2d | 2016-11-09 | 2016-11-10 | 10 | 0d |  |
| 12 | 4 | **Build Board** | 15d | 2016-11-08 | 2016-11-22 |  | 2d |  |
| 13 |  | Order Board Components | 1d | 2016-11-08 | 2016-11-08 | 9 | 2d |  |
| 14 |  | Components Shipping | 5d | 2016-11-09 | 2016-11-13 | 13 | 2d |  |
| 15 |  | Order Board | 1d | 2016-11-11 | 2016-11-11 | 11 | 0d |  |
| 16 |  | Board Shipping | 10d | 2016-11-12 | 2016-11-21 | 15 | 0d |  |
| 17 |  | Assemble Board | 1d | 2016-11-22 | 2016-11-22 | 14, 16 | 0d |  |
| 18 |  | Board Built | 0d | 2016-11-22 | 2016-11-22 | 17 | 8d |  |
| 19 | 5 | **Develop UI** | 6d | 2016-11-11 | 2016-11-16 |  | 9d |  |
| 20 |  | Design Concept | 1d | 2016-11-11 | 2016-11-11 | 11 | 9d |  |
| 21 |  | Code Data Acquisition | 3d | 2016-11-12 | 2016-11-14 | 20 | 9d |  |
| 22 |  | Code Interface | 3d | 2016-11-12 | 2016-11-14 | 20 | 9d |  |
| 23 |  | Test UI | 2d | 2016-11-15 | 2016-11-16 | 21, 22 | 9d |  |
| 24 | 6 | **Program Microcontroller** | 11d | 2016-11-14 | 2016-11-26 |  | 0d |  |
| 25 |  | Test Microcontroller Interface | 2d | 2016-11-14 | 2016-11-15 | 14 | 2d |  |
| 26 |  | Create General Program Conceptual Architecture | 2d | 2016-11-16 | 2016-11-17 | 25 | 2d |  |
| 27 |  | Code SPI Interface | 3d | 2016-11-18 | 2016-11-20 | 26 | 2d |  |
| 28 |  | Code Data Storage | 3d | 2016-11-18 | 2016-11-20 | 26 | 2d |  |
| 29 |  | Code Interrupts | 3d | 2016-11-18 | 2016-11-20 | 26 | 2d |  |
| 30 |  | Test Board | 2d | 2016-11-23 | 2016-11-26 | 27, 28, 29, 17 | 0d |  |
| 31 | 7 | **Build Rocket** | 5d | 2016-11-21 | 2016-11-27 |  | 0d |  |
| 32 |  | Design Rocket | 1d | 2016-11-21 | 2016-11-21 |  | 0d | as late as possible |
| 33 |  | Procure Rocket Materials | 1d | 2016-11-22 | 2016-11-22 | 32 | 0d | as late as possible |
| 34 |  | Build Rocket | 1d | 2016-11-23 | 2016-11-23 | 33 | 0d | start no earlier than 2016-11-23 |
| 35 |  | Test Rocket | 1d | 2016-11-26 | 2016-11-26 | 34 | 0d | as late as possible |
| 36 |  | Integrate Avionics System Into Rocket | 1d | 2016-11-27 | 2016-11-27 | 35, 30 | 0d |  |
| 37 | 8 | **Test Project** | 5d | 2016-11-28 | 2016-12-02 | 36, 23 | 0d |  |
| 38 |  | Test Flight | 1d | 2016-11-28 | 2016-11-28 |  | 0d |  |
| 39 |  | Test UI and Data from Flight | 1d | 2016-11-29 | 2016-11-29 | 38 | 0d |  |
| 40 |  | Troubleshoot | 3d | 2016-11-30 | 2016-12-02 | 39 | 0d |  |
| 41 |  | Project Complete | 0d | 2016-12-02 | 2016-12-02 | 40 | 0d |  |

## Version 2 (saved 2016-11-07)

Note of the change: Updated schedule

Last finish stays 2016-12-02.

Changed:

| ID | Task | Start | Finish | Duration | Total float | Other |
| --- | --- | --- | --- | --- | --- | --- |
| 2 | **Finalize Schematic** |  | 2016-11-06 → 2016-11-08 (+2d) | 2d → 3d | 24d → 23d |  |
| 3 | Check All Connections |  |  |  | 24d → 25d | resources Andy → Aaron |
| 4 | Reorganize Schematic |  |  |  | 24d → 25d | resources Minh → Danny |
| 5 | Check for Requirement Compliance | 2016-11-06 → 2016-11-08 (+2d) | 2016-11-06 → 2016-11-08 (+2d) | 1d → 0d | 24d → 23d | constraint none → start no earlier than 2016-11-08; resources Aaron → Aaron; Andrew; Andy; Danny; Minh |
| 6 | **Design Layout** |  | 2016-11-10 → 2016-11-08 (-2d) | 6d → 4d | 0d → 2d |  |
| 7 | Insert Footprints |  |  |  | 0d → 2d | resources Aaron → Andy |
| 8 | Verify Footprints |  |  |  | 0d → 2d | resources Danny → Andy |
| 11 | Review Layout | 2016-11-09 → 2016-11-08 (-1d) | 2016-11-10 → 2016-11-08 (-2d) | 2d → 0d | 0d → 2d | resources Aaron; Andy; Danny; Minh → Aaron; Andy; Danny; Minh; Andrew |
| 12 | **Build Board** |  | 2016-11-22 → 2016-11-20 (-2d) | 15d → 13d |  |  |
| 13 | Order Board Components |  |  |  |  | resources Andy → Aaron |
| 15 | Order Board | 2016-11-11 → 2016-11-09 (-2d) | 2016-11-11 → 2016-11-09 (-2d) |  | 0d → 2d | resources Aaron; Andy; Danny; Minh → Andy |
| 16 | Board Shipping | 2016-11-12 → 2016-11-10 (-2d) | 2016-11-21 → 2016-11-19 (-2d) |  | 0d → 2d |  |
| 17 | Assemble Board | 2016-11-22 → 2016-11-20 (-2d) | 2016-11-22 → 2016-11-20 (-2d) |  | 0d → 2d | resources Minh; Andy → Andy |
| 18 | Board Built | 2016-11-22 → 2016-11-20 (-2d) | 2016-11-22 → 2016-11-20 (-2d) |  | 8d → 10d |  |
| 19 | **Develop UI** | 2016-11-11 → 2016-11-09 (-2d) | 2016-11-16 → 2016-11-13 (-3d) | 6d → 5d | 9d → 12d |  |
| 20 | Design Concept | 2016-11-11 → 2016-11-09 (-2d) | 2016-11-11 → 2016-11-09 (-2d) |  | 9d → 12d | resources Aaron; Andy; Danny; Minh → Aaron; Minh |
| 21 | Code Data Acquisition | 2016-11-12 → 2016-11-10 (-2d) | 2016-11-14 → 2016-11-12 (-2d) |  | 9d → 12d |  |
| 22 | Code Interface | 2016-11-12 → 2016-11-10 (-2d) | 2016-11-14 → 2016-11-12 (-2d) |  | 9d → 12d |  |
| 23 | Test UI | 2016-11-15 → 2016-11-13 (-2d) | 2016-11-16 → 2016-11-13 (-3d) | 2d → 1d | 9d → 12d |  |
| 24 | **Program Microcontroller** |  | 2016-11-26 → 2016-11-22 (-4d) | 11d → 9d | 0d → 2d |  |
| 29 | Code Interrupts |  |  |  |  | resources Andy → Minh |
| 30 | Test Board | 2016-11-23 → 2016-11-21 (-2d) | 2016-11-26 → 2016-11-22 (-4d) |  | 0d → 2d | resources none → Minh; Andy |
| 32 | Design Rocket |  |  |  |  | resources Aaron; Andy; Danny; Minh → Aaron; Danny |
| 34 | Build Rocket |  |  |  |  | resources Danny; Andy → Danny |
