# Rocket_Av Schedule

How a schedule from MS Project changed from version to version. A marks actual dates.

## Version 1 (saved 2016-11-08, file Project Schedule.mpp)

Note of the change: Reorganized repo, added new ReadMe

| ID | WBS | Task | Duration | Start | Finish | Predecessors | Total float | Constraint |
| --- | --- | --- | --- | --- | --- | --- | --- | --- |
| 1 |  | Team 08: Rocket Avionics | 0d | 2016-11-05 | 2016-11-05 |  | 26d |  |
| 2 | 2 | **Finalize Schematic** | 3d | 2016-11-05 | 2016-11-08 |  | 23d |  |
| 3 |  | Check All Connections | 1d | 2016-11-05 | 2016-11-05 |  | 25d |  |
| 4 |  | Reorganize Schematic | 1d | 2016-11-05 | 2016-11-05 |  | 25d |  |
| 5 |  | Check for Requirement Compliance | 0d | 2016-11-08 | 2016-11-08 | 4, 3 | 23d | start no earlier than 2016-11-08 |
| 6 | 3 | **Design Layout** | 4d | 2016-11-05 | 2016-11-08 |  | 2d |  |
| 7 |  | Insert Footprints | 1d | 2016-11-05 | 2016-11-05 |  | 2d |  |
| 8 |  | Verify Footprints | 1d | 2016-11-06 | 2016-11-06 | 7 | 2d |  |
| 9 |  | Generate BOM | 1d | 2016-11-07 | 2016-11-07 | 8 | 2d |  |
| 10 |  | Layout Board | 2d | 2016-11-07 | 2016-11-08 | 8 | 2d |  |
| 11 |  | Review Layout | 0d | 2016-11-08 | 2016-11-08 | 10 | 2d |  |
| 12 | 4 | **Build Board** | 13d | 2016-11-08 | 2016-11-20 |  | 2d |  |
| 13 |  | Order Board Components | 1d | 2016-11-08 | 2016-11-08 | 9 | 2d |  |
| 14 |  | Components Shipping | 5d | 2016-11-09 | 2016-11-13 | 13 | 2d |  |
| 15 |  | Order Board | 1d | 2016-11-09 | 2016-11-09 | 11 | 2d |  |
| 16 |  | Board Shipping | 10d | 2016-11-10 | 2016-11-19 | 15 | 2d |  |
| 17 |  | Assemble Board | 1d | 2016-11-20 | 2016-11-20 | 14, 16 | 2d |  |
| 18 |  | Board Built | 0d | 2016-11-20 | 2016-11-20 | 17 | 10d |  |
| 19 | 5 | **Develop UI** | 5d | 2016-11-09 | 2016-11-13 |  | 12d |  |
| 20 |  | Design Concept | 1d | 2016-11-09 | 2016-11-09 | 11 | 12d |  |
| 21 |  | Code Data Acquisition | 3d | 2016-11-10 | 2016-11-12 | 20 | 12d |  |
| 22 |  | Code Interface | 3d | 2016-11-10 | 2016-11-12 | 20 | 12d |  |
| 23 |  | Test UI | 1d | 2016-11-13 | 2016-11-13 | 21, 22 | 12d |  |
| 24 | 6 | **Program Microcontroller** | 9d | 2016-11-14 | 2016-11-22 |  | 2d |  |
| 25 |  | Test Microcontroller Interface | 2d | 2016-11-14 | 2016-11-15 | 14 | 2d |  |
| 26 |  | Create General Program Conceptual Architecture | 2d | 2016-11-16 | 2016-11-17 | 25 | 2d |  |
| 27 |  | Code SPI Interface | 3d | 2016-11-18 | 2016-11-20 | 26 | 2d |  |
| 28 |  | Code Data Storage | 3d | 2016-11-18 | 2016-11-20 | 26 | 2d |  |
| 29 |  | Code Interrupts | 3d | 2016-11-18 | 2016-11-20 | 26 | 2d |  |
| 30 |  | Test Board | 2d | 2016-11-21 | 2016-11-22 | 27, 28, 29, 17 | 2d |  |
| 31 | 7 | **Build Rocket** | 5d | 2016-11-21 | 2016-11-27 |  | 0d |  |
| 32 |  | Design Rocket | 1d | 2016-11-21 | 2016-11-21 |  | 0d | as late as possible |
| 33 |  | Procure Rocket Materials | 1d | 2016-11-22 | 2016-11-22 | 32 | 0d | as late as possible |
| 34 |  | Build Rocket | 1d | 2016-11-23 | 2016-11-23 | 33 | 0d | start no earlier than 2016-11-23 |
| 35 |  | Test Rocket | 1d | 2016-11-26 | 2016-11-26 | 34 | 0d | as late as possible |
| 36 |  | Integrate Avionics System Into Rocket | 1d | 2016-11-27 | 2016-11-27 | 35, 30 | 0d |  |
| 37 | 8 | **Test Project** | 5d | 2016-11-28 | 2016-12-02 | 36, 23 | 0d |  |
| 38 |  | Test Flight | 1d | 2016-11-28 | 2016-11-28 |  | 0d |  |
| 39 |  | Test UI and Data from Flight | 1d | 2016-11-29 | 2016-11-29 | 38 | 0d |  |
| 40 |  | Troubleshoot | 3d | 2016-11-30 | 2016-12-02 | 39 | 0d |  |
| 41 |  | Project Complete | 0d | 2016-12-02 | 2016-12-02 | 40 | 0d |  |

## Version 2 (saved 2016-12-08, file Project Schedule Actual.mpp)

Note of the change: Merge branch 'master' of https://github.com/rusinek/ECE411_RocketAv

Last finish 2016-12-02 → 2016-12-09 (+7d). Complete tasks 0 → 29.

Removed: 19 Develop UI; 20 Design Concept; 21 Code Data Acquisition; 22 Code Interface; 23 Test UI; 29 Code Interrupts

Changed:

| ID | Task | Start | Finish | Duration | Complete | Total float | Predecessors | Other |
| --- | --- | --- | --- | --- | --- | --- | --- | --- |
| 1 | Team 08: Rocket Avionics | 2016-11-05 A | 2016-11-05 A |  | 0% → 100% | 26d → none |  | baseline start none → 2016-11-05; baseline finish none → 2016-11-05 |
| 2 | **Finalize Schematic** | 2016-11-05 A | 2016-11-08 A |  | 0% → 100% | 23d → none |  | baseline start none → 2016-11-05; baseline finish none → 2016-11-08 |
| 3 | Check All Connections | 2016-11-05 A | 2016-11-05 A |  | 0% → 100% | 25d → none |  | baseline start none → 2016-11-05; baseline finish none → 2016-11-05 |
| 4 | Reorganize Schematic | 2016-11-05 A | 2016-11-05 A |  | 0% → 100% | 25d → none |  | baseline start none → 2016-11-05; baseline finish none → 2016-11-05 |
| 5 | Check for Requirement Compliance | 2016-11-08 A | 2016-11-08 A |  | 0% → 100% | 23d → none | 4, 3 → none | baseline start none → 2016-11-08; baseline finish none → 2016-11-08 |
| 6 | **Design Layout** | 2016-11-05 A |  |  | 0% → 100% | 2d → none |  | baseline start none → 2016-11-05; baseline finish none → 2016-11-08 |
| 7 | Insert Footprints | 2016-11-05 A | 2016-11-05 A |  | 0% → 100% | 2d → none |  | baseline start none → 2016-11-05; baseline finish none → 2016-11-05 |
| 8 | Verify Footprints | 2016-11-06 A | 2016-11-06 A |  | 0% → 100% | 2d → none | 7 → none | baseline start none → 2016-11-06; baseline finish none → 2016-11-06 |
| 9 | Generate BOM | 2016-11-07 A | 2016-11-07 A |  | 0% → 100% | 2d → none | 8 → none | baseline start none → 2016-11-07; baseline finish none → 2016-11-07 |
| 10 | Layout Board | 2016-11-07 A | 2016-11-08 A |  | 0% → 100% | 2d → none | 8 → none | baseline start none → 2016-11-07; baseline finish none → 2016-11-08 |
| 11 | Review Layout | 2016-11-08 → 2016-11-09 A (+1d) | 2016-11-08 → 2016-11-09 A (+1d) |  | 0% → 100% | 2d → none | 10 → none | baseline start none → 2016-11-08; baseline finish none → 2016-11-08 |
| 12 | **Build Board** | 2016-11-08 A | 2016-11-20 → 2016-12-05 A (+15d) | 13d → 25d | 0% → 100% | 2d → none |  | baseline start none → 2016-11-08; baseline finish none → 2016-11-20 |
| 13 | Order Board Components | 2016-11-08 A | 2016-11-08 A |  | 0% → 100% | 2d → none | 9 → none | baseline start none → 2016-11-08; baseline finish none → 2016-11-08 |
| 14 | Components Shipping | 2016-11-09 A | 2016-11-13 → 2016-11-23 A (+10d) | 5d → 15d | 0% → 100% | 2d → none | 13 → none | constraint none → finish no earlier than 2016-11-23; baseline start none → 2016-11-09; baseline finish none → 2016-11-13 |
| 15 | Order Board | 2016-11-09 A | 2016-11-09 A |  | 0% → 100% | 2d → none | 11 → none | baseline start none → 2016-11-09; baseline finish none → 2016-11-09 |
| 16 | Board Shipping | 2016-11-10 A | 2016-11-19 → 2016-11-23 A (+4d) | 10d → 14d | 0% → 100% | 2d → none | 15 → none | constraint none → finish no earlier than 2016-11-23; baseline start none → 2016-11-10; baseline finish none → 2016-11-19 |
| 17 | Assemble Board | 2016-11-20 → 2016-12-01 A (+11d) | 2016-11-20 → 2016-12-04 A (+14d) | 1d → 4d | 0% → 100% | 2d → none | 14, 16 → none | resources Andy → Andy; Danny; Minh; Aaron; baseline start none → 2016-11-20; baseline finish none → 2016-11-20 |
| 18 | Board Built | 2016-11-20 → 2016-12-05 A (+15d) | 2016-11-20 → 2016-12-05 A (+15d) |  | 0% → 100% | 10d → none | 17 → none | baseline start none → 2016-11-20; baseline finish none → 2016-11-20 |
| 19 | **Program Microcontroller** | 2016-11-14 → 2016-11-29 (+15d) | 2016-11-22 → 2016-12-05 A (+13d) | 9d → 7d | 0% → 100% | 2d → none |  | baseline start none → 2016-11-14; baseline finish none → 2016-11-22 |
| 20 | Test Microcontroller Interface | 2016-11-14 → 2016-12-01 A (+17d) | 2016-11-15 → 2016-12-02 A (+17d) | 2d → 1d | 0% → 100% | 2d → none | 14 → none | constraint none → start no earlier than 2016-12-01; resources Aaron → Andy; Danny; Minh; baseline start none → 2016-11-14; baseline finish none → 2016-11-15 |
| 21 | Create General Program Conceptual Architecture | 2016-11-16 → 2016-12-02 A (+16d) | 2016-11-17 → 2016-12-03 A (+16d) |  | 0% → 100% | 2d → none | 20 → none | resources Aaron; Andy; Danny; Minh → Aaron; Danny; baseline start none → 2016-11-16; baseline finish none → 2016-11-17 |
| 22 | Code SPI Interface | 2016-11-18 → 2016-12-03 A (+15d) | 2016-11-20 → 2016-12-05 A (+15d) |  | 0% → 100% | 2d → none | 21 → none | resources Danny → Aaron; baseline start none → 2016-11-18; baseline finish none → 2016-11-20 |
| 23 | Code Data Storage | 2016-11-18 → 2016-12-03 A (+15d) | 2016-11-20 → 2016-12-05 A (+15d) |  | 0% → 100% | 2d → none | 21 → none | baseline start none → 2016-11-18; baseline finish none → 2016-11-20 |
| 24 | Test Board | 2016-11-21 → 2016-12-05 A (+14d) | 2016-11-22 → 2016-12-05 A (+13d) | 2d → 1d | 0% → 100% | 2d → none | 22, 23, Code Interrupts, 17 → none | resources Minh; Andy → Minh; Andy; Danny; baseline start none → 2016-11-21; baseline finish none → 2016-11-22 |
| 25 | **Build Rocket** | 2016-11-21 → 2016-11-25 A (+4d) | 2016-11-27 → 2016-12-05 A (+8d) | 5d → 11d | 0% → 100% | 0d → none |  | baseline start none → 2016-11-21; baseline finish none → 2016-11-27 |
| 26 | Design Rocket | 2016-11-21 → 2016-11-25 A (+4d) | 2016-11-21 → 2016-11-25 A (+4d) |  | 0% → 100% | 0d → none |  | baseline start none → 2016-11-21; baseline finish none → 2016-11-21 |
| 27 | Procure Rocket Materials | 2016-11-22 → 2016-11-28 A (+6d) | 2016-11-22 → 2016-11-28 A (+6d) |  | 0% → 100% | 0d → none | 26 → none | baseline start none → 2016-11-22; baseline finish none → 2016-11-22 |
| 28 | Build Rocket | 2016-11-23 → 2016-11-29 A (+6d) | 2016-11-23 → 2016-11-29 A (+6d) |  | 0% → 100% | 0d → none | 27 → none | baseline start none → 2016-11-23; baseline finish none → 2016-11-23 |
| 29 | Test Rocket | 2016-11-26 → 2016-12-03 A (+7d) | 2016-11-26 → 2016-12-03 A (+7d) |  | 0% → 100% | 0d → none | 28 → none | baseline start none → 2016-11-26; baseline finish none → 2016-11-26 |
| 30 | Integrate Avionics System Into Rocket | 2016-11-27 → 2016-12-05 A (+8d) | 2016-11-27 → 2016-12-05 A (+8d) |  | 0% → 100% | 0d → none | 29, 24 → none | baseline start none → 2016-11-27; baseline finish none → 2016-11-27 |
| 31 | **Test Project** | 2016-11-28 → 2016-12-06 A (+8d) | 2016-12-02 → 2016-12-09 A (+7d) | 5d → 3d? | 0% → 100% | 0d → none | 30, Test UI → none | baseline start none → 2016-11-28; baseline finish none → 2016-12-02 |
| 32 | Test Flights | 2016-11-28 → 2016-12-07 A (+9d) | 2016-11-28 → 2016-12-08 A (+10d) | 1d → 2d | 0% → 100% | 0d → none |  | was named Test Flight; baseline start none → 2016-11-28; baseline finish none → 2016-11-28 |
| 33 | Test UI and Data from Flight | 2016-11-29 → 2016-12-07 A (+8d) | 2016-11-29 → 2016-12-08 A (+9d) | 1d → 2d | 0% → 100% | 0d → none | 32 → none | constraint none → finish no earlier than 2016-12-08; baseline start none → 2016-11-29; baseline finish none → 2016-11-29 |
| 34 | Troubleshoot | 2016-11-30 → 2016-12-06 A (+6d) | 2016-12-02 → 2016-12-08 A (+6d) |  | 0% → 100% | 0d → none | 33 → none | constraint none → finish no earlier than 2016-12-08; baseline start none → 2016-11-30; baseline finish none → 2016-12-01 |
| 35 | Project Complete | 2016-12-02 → 2016-12-09 A (+7d) | 2016-12-02 → 2016-12-09 A (+7d) |  | 0% → 100% | 0d → none | 34 → none | baseline start none → 2016-12-02; baseline finish none → 2016-12-02 |
